Schedule from MS Project, 2019-04-01 to 2019-06-07, costs in ¥.

## Calendars

- 标准: Mon-Fri 08:00-12:00, 13:00-17:00; Sat-Sun off.

## Resources

| Resource | Rate | Cost per use |
| --- | --- | --- |
| UI设计师 | 30 |  |
| 采购负责人 | 26 |  |
| 架构师 | 40 |  |
| 项目经理 | 50 |  |
| 需求专家 | 35 |  |
| 质量专家 | 30 |  |
| 程序员1 | 30 |  |
| 程序员2 | 33 |  |
| 测试员1 | 29 |  |
| 材料 |  | 500 |
| 间接成本 |  | 500 |

## Schedule

| ID | WBS | Task | Type | Duration | Start | Finish | Predecessors | Total slack | Constraint | Resources | Work | Cost |
| --- | --- | --- | --- | --- | --- | --- | --- | --- | --- | --- | --- | --- |
| 1 | 1 | **项目启动** |  | 6d | 2019-04-01 | 2019-04-08 |  |  |  | 间接成本 | 96h | 6,650 |
| 2 | 1.1 | 任命项目经理 | manual | 1d | 2019-04-01 | 2019-04-01 |  |  |  | 项目经理 | 8h | 3,400 |
| 3 | 1.2 | 组建核心团队 | manual | 1d | 2019-04-02 | 2019-04-02 |  |  |  | 项目经理 | 8h | 900 |
| 4 | 1.3 | 干系人分析 | manual | 1d | 2019-04-03 | 2019-04-03 | 6 |  |  | 项目经理 | 8h | 400 |
| 5 | 1.4 | 制定里程碑进度计划 | manual | 1d | 2019-04-04 | 2019-04-04 |  |  |  | 项目经理 | 8h | 600 |
| 6 | 1.5 | 编写项目章程 | manual | 1d | 2019-04-05 | 2019-04-05 | 8 |  |  | 项目经理 | 8h | 400 |
| 7 | 1.6 | 项目启动大会 | milestone, manual | 1d | 2019-04-08 | 2019-04-08 |  |  |  | 项目经理 | 8h | 450 |
| 8 | 2 | **项目规划** |  | 15d | 2019-04-08 | 2019-04-26 |  |  |  |  | 216h | 8,376 |
| 9 | 2.1 | 范围规划 |  | 3d | 2019-04-08 | 2019-04-10 |  | 42d | start no earlier than 2019-04-08 | 架构师; 项目经理; 需求专家 | 72h | 3,000 |
| 10 | 2.2 | 时间规划 | manual | 2d | 2019-04-11 | 2019-04-12 |  |  |  | 项目经理; 需求专家 | 32h | 1,360 |
| 11 | 2.3 | 成本规划 | manual | 1d | 2019-04-15 | 2019-04-15 |  |  |  | 需求专家 | 8h | 280 |
| 12 | 2.4 | 质量规划 | manual | 1d | 2019-04-16 | 2019-04-16 |  |  |  | 质量专家 | 8h | 240 |
| 13 | 2.5 | 人力资源 | manual | 1d | 2019-04-17 | 2019-04-17 |  |  |  | 架构师; 项目经理 | 16h | 720 |
| 14 | 2.6 | 采购规划 | manual | 2d | 2019-04-18 | 2019-04-19 |  |  |  | 采购负责人 | 16h | 416 |
| 15 | 2.7 | 沟通 | manual | 4d | 2019-04-22 | 2019-04-25 |  |  |  | 需求专家 | 32h | 1,120 |
| 16 | 2.8 | 风险与整合 | manual | 1d | 2019-04-26 | 2019-04-26 |  |  |  | 架构师; 项目经理; 需求专家; 质量专家 | 32h | 1,240 |
| 17 | 3 | **执行与监控** |  | 13d? | 2019-04-29 | 2019-05-15 |  |  |  | 间接成本 | 488h | 13,856 |
| 18 | 3.1 | 组建团队 | manual | 1d | 2019-04-29 | 2019-04-29 |  |  |  | 项目经理 | 8h | 400 |
| 19 | 3.2 | **项目执行** |  | 17d | 2019-04-30 | 2019-05-22 |  |  |  |  | 296h | 9,276 |
| 20 | 3.2.1 | **用户模块** |  | 17d | 2019-04-30 | 2019-05-22 |  |  |  |  | 296h | 9,276 |
| 21 | 3.2.1.1 | 用户注册 | manual | 1d | 2019-04-30 | 2019-04-30 |  |  |  | 程序员1; 材料 | 16h | 740 |
| 22 | 3.2.1.2 | **用户登录** |  | 3d | 2019-05-01 | 2019-05-03 | 21 |  |  |  | 24h | 712 |
| 23 | 3.2.1.2.1 | 登陆页面的UI设计 | manual | 1d | 2019-05-01 | 2019-05-01 |  |  |  | UI设计师 | 8h | 240 |
| 24 | 3.2.1.2.2 | 登录页面登录功能实现 | manual | 1d | 2019-05-02 | 2019-05-02 |  |  |  | UI设计师 | 8h | 240 |
| 25 | 3.2.1.2.3 | 登录功能的测试 | manual | 1d | 2019-05-03 | 2019-05-03 |  |  |  | 测试员1 | 8h | 232 |
| 26 | 3.2.1.3 | 用户首页 | manual | 5d | 2019-05-06 | 2019-05-10 |  |  |  | 程序员1; UI设计师 | 80h | 2,400 |
| 27 | 3.2.1.4 | 用户冷门爱好选择界面 | manual | 2d | 2019-05-13 | 2019-05-14 |  |  |  | 程序员1; UI设计师 | 32h | 960 |
| 28 | 3.2.1.5 | 搜索界面 | manual | 3d | 2019-05-15 | 2019-05-17 |  |  |  | 程序员2; UI设计师; 程序员1 | 72h | 2,232 |
| 29 | 3.2.1.6 | 冷门爱好匹配界面 | manual | 3d | 2019-05-20 | 2019-05-22 |  |  |  | 程序员2; UI设计师; 程序员1 | 72h | 2,232 |
| 30 | 3.3 | 汇报收集绩效指标 | manual | 1d | 2019-05-23 | 2019-05-23 |  |  |  | 架构师 | 8h | 320 |

| ID | WBS | Task | Type | Duration | Start | Finish | Predecessors | Total slack | Free slack | Resources | Work | Cost |
| --- | --- | --- | --- | --- | --- | --- | --- | --- | --- | --- | --- | --- |
| 31 | 3.4 | **评审绩效** |  | 3d | 2019-05-24 | 2019-05-28 |  |  |  |  | 32h | 1,440 |
| 32 | 3.4.1 | 评审各项绩效指标 | manual | 1d | 2019-05-24 | 2019-05-24 |  |  |  | 项目经理 | 8h | 400 |
| 33 | 3.4.2 | 分析各项偏差 | manual | 1d | 2019-05-27 | 2019-05-27 |  |  |  | 架构师; 项目经理 | 16h | 720 |
| 34 | 3.4.3 | 分析各项偏差原因 | manual | 1d | 2019-05-28 | 2019-05-28 |  |  |  | 架构师 | 8h | 320 |
| 35 | 3.5 | 报告绩效沟通变更 |  | 1d | 2019-05-29 | 2019-05-29 | 31 | -12d | 0d | 项目经理 | 8h | 400 |
| 36 | 3.6 | 变更控制实施变更 |  | 1d | 2019-05-30 | 2019-05-30 | 35 | -12d | 0d | 项目经理 | 8h | 400 |
| 37 | 3.7 | 发布成果项目验收 |  | 1d | 2019-05-31 | 2019-05-31 | 36 | -12d | 0d | 架构师; 项目经理 | 16h | 720 |
| 38 | 3.8 | 风险管理 | manual | 1d | 2019-06-04 | 2019-06-04 |  |  |  | 项目经理 | 8h | 400 |
| 39 | 4 | **项目收尾** |  | 3d | 2019-06-05 | 2019-06-07 |  |  |  |  | 24h | 1,200 |
| 40 | 4.1 | 结束项目 | manual | 2d | 2019-06-05 | 2019-06-06 |  |  |  | 项目经理 | 16h | 800 |
| 41 | 4.2 | 结束采购 | manual | 1d | 2019-06-07 | 2019-06-07 |  |  |  | 项目经理 | 8h | 400 |
